# KeHoach

Schedule from MS Project, 2018-10-04 to 2018-12-19, A marks actual dates.
diakov.net

## Calendars

- VLSI_Gio: Mon-Sun 07:00-11:00, 13:00-17:00.

## Resources

| Resource |
| --- |
| Word |
| PowerPoint |
| Quartus II |
| ModelSim |
| Visio |
| Chuyen |
| Dat |
| Nam |
| AnhLONG |
| Visual |

## Schedule

| ID | WBS | Task | Type | Duration | Start | Finish | Predecessors | Complete | Actual finish | Baseline start | Baseline finish | Baseline duration | Constraint | Resources | Work | Actual work |
| --- | --- | --- | --- | --- | --- | --- | --- | --- | --- | --- | --- | --- | --- | --- | --- | --- |
| 1 | 1 | Xác định yêu cầu MCU |  | 3d | 2018-10-04 A | 2018-10-06 A |  | 100% |  | 2018-10-04 | 2018-10-06 | 3d | start no earlier than 2018-10-04 | Visio; Chuyen; Dat; Nam | 72h | 72h |
| 2 | 2 | Mô tả thiết kế |  | 14d | 2018-10-07 A | 2018-10-20 A | 1 | 100% |  | 2018-10-07 | 2018-10-20 | 14d | start no earlier than 2018-10-05 | Chuyen; Dat; Nam; Word; Visio | 336h | 336h |
| 3 | 3 | Thiết kế trương trình dịch | manual | 14d | 2018-10-21 A | 2018-11-03 A | 2 | 100% |  |  |  |  |  | Dat | 112h | 112h |
| 4 | 4 | thiết kế sơ đồ khối Top |  | 7d | 2018-10-21 A | 2018-10-27 A | 2 | 100% |  | 2018-10-21 | 2018-10-27 | 7d | start no earlier than 2018-10-14 | Nam; Visio | 56h | 56h |
| 5 | 5 | **thiết kế sơ đồ khối chi tiết** |  | 40d | 2018-10-21 A | 2018-11-29 | 1, 2, 4 | 100% | 2018-11-19 | 2018-10-21 | 2018-11-19 | 30d |  |  | 960h | 960h |
| 6 | 5.1 | thiết kế khối PC |  | 9d | 2018-10-31 A | 2018-11-08 A | 2 | 100% |  | 2018-10-31 | 2018-11-08 | 9d | start no earlier than 2018-10-31 | Chuyen; Nam; Visio | 144h | 144h |
| 7 | 5.2 | Thiết kế khối giải mã và bộ nhớ |  | 15d | 2018-11-01 A | 2018-11-15 A | 2 | 100% |  | 2018-11-01 | 2018-11-15 | 15d | start no earlier than 2018-11-01 | Dat; Chuyen; Visio | 240h | 240h |
| 8 | 5.3 | Thiết kế khối thanh ghi |  | 5d | 2018-10-22 A | 2018-10-26 A | 2 | 100% |  | 2018-10-22 | 2018-10-26 | 5d | start no earlier than 2018-10-22 | Chuyen; Dat; Nam; Visio | 120h | 120h |
| 9 | 5.4 | thiết kế khối ALU |  | 7d | 2018-10-21 A | 2018-10-27 A | 2 | 100% |  | 2018-10-21 | 2018-10-27 | 7d | start no earlier than 2018-10-21 | Chuyen; Visio | 56h | 56h |
| 10 | 5.5 | Thiết kế khối Control |  | 25d | 2018-10-26 A | 2018-11-19 A | 9FS-10d | 100% |  | 2018-10-26 | 2018-11-19 | 25d | start no earlier than 2018-10-26 | Nam; Dat; Visio | 400h | 400h |
| 11 | 6 | thiết kế FSM |  | 14d | 2018-11-01 A | 2018-11-14 A | 4FS+4d, 5SS+10d | 100% |  | 2018-11-01 | 2018-11-14 | 14d | start no earlier than 2018-10-31 | Dat; Nam; Visio | 224h | 224h |
| 12 | 7 | **Thực thi(code)** |  | 45d | 2018-10-31 A | 2018-12-14 A |  | 100% |  | 2018-10-31 | 2018-11-20 | 21d |  |  | 1320h | 1320h |
| 13 | 7.1 | Thực thi trương trình dịch | manual | 13d | 2018-11-04 A | 2018-11-16 A | 3 | 100% |  |  |  |  |  | Visual; Dat | 48h | 48h |
| 14 | 7.2 | **khối ALU** |  | 12d | 2018-10-31 A | 2018-11-11 A | 9 | 100% |  | 2018-10-31 | 2018-11-11 | 12d |  |  | 528h | 528h |
| 15 | 7.2.1 | Lệnh access memory | manual | 7d | 2018-10-31 A | 2018-11-06 A | 9 | 100% |  | 2018-10-31 | 2018-11-06 | 7d |  | Dat; Nam; Quartus II; Chuyen |  |  |
| 16 | 7.2.2 | Lệnh số học | manual | 7d | 2018-10-31 A | 2018-11-06 A | 9 | 100% |  | 2018-10-31 | 2018-11-06 | 7d |  | Chuyen; Dat; Nam; Quartus II | 168h | 168h |
| 17 | 7.2.3 | Lệnh logic | manual | 7d | 2018-10-31 A | 2018-11-06 A | 9 | 100% |  | 2018-10-31 | 2018-11-06 | 7d |  | Chuyen; Dat; Nam; Quartus II | 168h | 168h |
| 18 | 7.2.4 | Lệnh flow control |  | 12d | 2018-10-31 A | 2018-11-11 A | 6FS-15d | 100% |  | 2018-10-31 | 2018-11-11 | 12d |  | Nam; Dat | 192h | 192h |
| 19 | 7.3 | Thực thi khối PC |  | 12d | 2018-10-31 A | 2018-11-11 A | 6FS-15d | 100% |  | 2018-10-31 | 2018-11-11 | 12d |  | Nam; Chuyen; Quartus II | 192h | 192h |
| 20 | 7.4 | Khối giải mã |  | 14d | 2018-11-07 A | 2018-11-20 A | 7FS-9d | 100% |  | 2018-11-07 | 2018-11-20 | 14d | start no earlier than 2018-11-03 | Dat; Nam; Quartus II | 224h | 224h |
| 21 | 7.5 | **Khối bộ nhớ** |  | 15d | 2018-10-31 A | 2018-11-14 | 8 | 100% | 2018-11-12 | 2018-10-31 | 2018-11-14 | 15d |  |  | 184h | 184h |
| 22 | 7.5.1 | khối bộ nhớ(RAM) |  | 9d | 2018-11-04 A | 2018-11-12 A | 7FS-12d | 100% |  | 2018-11-04 | 2018-11-12 | 9d |  | Dat; Quartus II | 72h | 72h |
| 23 | 7.5.2 | Khối thanh ghi |  | 7d | 2018-10-31 A | 2018-11-06 A | 8 | 100% |  | 2018-10-31 | 2018-11-06 | 7d |  | Chuyen; Dat; Quartus II | 112h | 112h |
| 24 | 7.6 | Khối Control |  | 18d | 2018-11-03 A | 2018-11-20 A | 10SS+8d | 100% |  | 2018-11-03 | 2018-11-20 | 18d |  | Nam; Quartus II | 144h | 144h |
| 25 | 7.7 | ghép code | manual | 24d | 2018-11-21 A | 2018-12-14 A | 14, 19, 20, 21, 24 | 100% |  |  |  |  |  |  |  |  |

| ID | WBS | Task | Type | Duration | Start | Finish | Predecessors | Complete | Actual finish | Baseline start | Baseline finish | Baseline duration | Constraint | Resources | Work | Actual work |
| --- | --- | --- | --- | --- | --- | --- | --- | --- | --- | --- | --- | --- | --- | --- | --- | --- |
| 26 | 8 | **Kiểm thử** |  | 32d | 2018-11-09 A | 2018-12-10 |  | 100% | 2018-11-29 | 2018-11-09 | 2018-12-10 | 32d |  |  | 664h | 664h |
| 27 | 8.1 | **test trên modelsim** |  | 21d | 2018-11-09 A | 2018-11-29 A | 12 | 100% |  | 2018-11-09 | 2018-11-29 | 21d |  |  | 664h | 664h |
| 28 | 8.1.1 | Kiểm thử khối PC |  | 9d | 2018-11-09 A | 2018-11-17 A | 19SS+5d | 100% |  | 2018-11-09 | 2018-11-17 | 9d |  | Nam; ModelSim; Chuyen | 144h | 144h |
| 29 | 8.1.2 | Kiểm thử khối giả mã | manual | 9d | 2018-11-21 A | 2018-11-29 A | 20 | 100% |  | 2018-11-21 | 2018-11-29 | 9d |  | Dat; Nam; ModelSim | 144h | 144h |
| 30 | 8.1.3 | kiểm thử khối thanh ghi |  | 10d | 2018-11-15 A | 2018-11-24 A | 21 | 100% |  | 2018-11-15 | 2018-11-24 | 10d |  | Chuyen; Dat; ModelSim | 160h | 160h |
| 31 | 8.1.4 | Kiểm thử khối ALU |  | 9d | 2018-11-12 A | 2018-11-20 A | 14 | 100% |  | 2018-11-12 | 2018-11-20 | 9d |  | Chuyen; Dat; Nam; ModelSim | 216h | 216h |
| 32 | 9 | Làm báo cáo |  | 7d | 2018-12-11 A | 2018-12-19 A | 26 | 100% |  | 2018-12-11 | 2018-12-17 | 7d | start no earlier than 2018-12-11 | Chuyen; Dat; Nam; PowerPoint; Visio; Word [125%] | 168h | 168h |
